# Costos

How a schedule from MS Project changed from version to version. A marks actual dates.

## Version 1 (saved 2023-04-23)

Note of the change: primera version

| ID | WBS | Task | Duration | Start | Finish | Predecessors | Total float |
| --- | --- | --- | --- | --- | --- | --- | --- |
| 1 | 1 | **Asimov** | 110d | 2023-03-20 09:00 | 2023-08-18 19:00 |  | 0d |
| 2 | 1.1 | **Inicio** | 1.5d | 2023-03-20 09:00 | 2023-03-21 13:00 |  | 0d |
| 3 | 1.1.1 | **Desarrollo Project Charter** | 1.5d | 2023-03-20 09:00 | 2023-03-21 13:00 |  | 0d |
| 4 |  | Identificar necesidades y requerimientos | 8h | 2023-03-20 09:00 | 2023-03-20 19:00 |  | 0.5d |
| 5 |  | Identificar indicadores de éxito y alcance | 4h | 2023-03-20 09:00 | 2023-03-20 13:00 |  | 1d |
| 6 |  | Identificar restricciones e impacto | 4h | 2023-03-20 09:00 | 2023-03-20 13:00 |  | 0d |
| 7 | 1.1.1.4 | **Organizar equipo, stakeholders y recursos** | 1d | 2023-03-20 15:00 | 2023-03-21 13:00 | 6 | 0d |
| 8 |  | Identificación de stakeholders | 4h | 2023-03-20 15:00 | 2023-03-20 19:00 |  | 0d |
| 9 |  | Asignación de roles en equipo | 4h | 2023-03-21 09:00 | 2023-03-21 13:00 | 8FF | 0d |
| 10 |  | Definir fases e hitos del proyecto | 8h | 2023-03-20 15:00 | 2023-03-21 13:00 | 7SS | 0d |
| 11 |  | Aprobación del proyecto | 0h | 2023-03-21 13:00 | 2023-03-21 13:00 | 3 | 0d |
| 12 | 1.2 | **Planificación** | 18.5d | 2023-03-21 15:00 | 2023-04-14 19:00 | 2 | 0d |
| 13 | 1.2.1 | **Gestión del alcance** | 1d | 2023-03-21 15:00 | 2023-03-22 13:00 |  | 0d |
| 14 |  | Elaborar estructura jerarquica WBS | 4h | 2023-03-21 15:00 | 2023-03-21 19:00 |  | 0d |
| 15 |  | Realizar descripción de fases | 4h | 2023-03-22 09:00 | 2023-03-22 13:00 | 14 | 0d |
| 16 | 1.2.2 | **Gestión de requerimientos** | 3d | 2023-03-22 15:00 | 2023-03-27 13:00 | 13 | 0d |
| 17 |  | Recolectar requerimientos | 8h | 2023-03-22 15:00 | 2023-03-23 13:00 |  | 0d |
| 18 |  | Analizar requerimientos | 4h | 2023-03-23 15:00 | 2023-03-23 19:00 | 17 | 0d |
| 19 |  | Categorizar y describir requerimientos | 4h | 2023-03-24 09:00 | 2023-03-24 13:00 | 18 | 0d |
| 20 |  | Elaborar matriz de trazabilidad | 8h | 2023-03-24 15:00 | 2023-03-27 13:00 | 19 | 0d |
| 21 | 1.2.3 | **Gestión de costos** | 4d | 2023-03-27 15:00 | 2023-03-31 13:00 | 16 | 0d |
| 22 | 1.2.3.1 | **Identificación de costos unitarios asociados al proyecto** | 4d | 2023-03-27 15:00 | 2023-03-31 13:00 |  | 0d |
| 23 |  | Costos de personal | 8h | 2023-03-27 15:00 | 2023-03-28 13:00 |  | 0d |
| 24 |  | Costos de infraestructura | 8h | 2023-03-28 15:00 | 2023-03-29 13:00 | 23 | 0d |
| 25 |  | Costos de software y hardware | 8h | 2023-03-29 15:00 | 2023-03-30 13:00 | 24 | 0d |
| 26 |  | Costos de servicios tercerizados | 8h | 2023-03-30 15:00 | 2023-03-31 13:00 | 25 | 0d |
| 27 |  | Costos por tarea | 4h | 2023-03-27 15:00 | 2023-03-27 19:00 |  | 3d |
| 28 |  | Reservas para contingencias | 4h | 2023-03-28 09:00 | 2023-03-28 13:00 | 27 | 3d |
| 29 | 1.2.4 | **Gestión de recursos** | 3.5d | 2023-03-31 15:00 | 2023-04-05 19:00 | 21 | 0d |
| 30 | 1.2.4.1 | **Plan de gestión de recursos humanos** | 2d | 2023-03-31 15:00 | 2023-04-04 13:00 |  | 0d |
| 31 |  | Definir organigrama del proyecto | 4h | 2023-03-31 15:00 | 2023-03-31 19:00 |  | 0d |
| 32 |  | Describir roles del equipo del proyecto | 4h | 2023-04-03 09:00 | 2023-04-03 13:00 | 31 | 0d |
| 33 |  | Establecer requerimientos de personal de proyecto | 4h | 2023-04-03 15:00 | 2023-04-03 19:00 | 32 | 0d |
| 34 |  | Definir tareas a cargo | 4h | 2023-04-04 09:00 | 2023-04-04 13:00 | 33 | 0d |
| 35 | 1.2.4.2 | **Estructura de desgloce de recursos** | 1.5d | 2023-04-04 15:00 | 2023-04-05 19:00 | 30 | 0d |
| 36 |  | Definir organigrama de recursos | 4h | 2023-04-04 15:00 | 2023-04-04 19:00 |  | 0d |
| 37 |  | Definir criterios de contratación y costo unitario | 8h | 2023-04-05 09:00 | 2023-04-05 19:00 | 36 | 0d |
| 38 | 1.2.5 | **Gestión del cronograma** | 2d | 2023-04-06 09:00 | 2023-04-07 19:00 | 29 | 0d |
| 39 | 1.2.5.1 | **Cronograma del proyecto** | 2d | 2023-04-06 09:00 | 2023-04-07 19:00 |  | 0d |
| 40 |  | Agregar fases, subfases y actividades del proyecto | 4h | 2023-04-06 09:00 | 2023-04-06 13:00 |  | 0d |
| 41 |  | Agregar hitos del proyecto | 4h | 2023-04-06 15:00 | 2023-04-06 19:00 | 40 | 0d |
| 42 |  | Vincular fases, subfases e hitos | 4h | 2023-04-07 09:00 | 2023-04-07 13:00 | 41 | 0d |
| 43 |  | Agregar recursos y costos | 4h | 2023-04-07 15:00 | 2023-04-07 19:00 | 42 | 0d |
| 44 | 1.2.6 | **Gestión de riesgos** | 2.5d | 2023-04-10 09:00 | 2023-04-12 13:00 | 38 | 0d |
| 45 |  | Establecer priorización de riesgos | 8h | 2023-04-10 09:00 | 2023-04-10 19:00 |  | 0d |
| 46 |  | Documentar plan de gestión de riesgo | 4h | 2023-04-11 09:00 | 2023-04-11 13:00 | 45 | 0d |
| 47 |  | Identificar plan de soluciones | 8h | 2023-04-11 15:00 | 2023-04-12 13:00 | 46 | 0d |
| 48 | 1.2.7 | **Gestión de calidad** | 2.5d | 2023-04-12 15:00 | 2023-04-14 19:00 | 44 | 0d |
| 49 |  | Definir requisitos y estándares de calidad | 8h | 2023-04-12 15:00 | 2023-04-13 13:00 |  | 0d |
| 50 |  | Identificar métricas de medición de calidad | 8h | 2023-04-13 15:00 | 2023-04-14 13:00 | 49 | 0d |
| 51 |  | Documentar plan de gestión de calidad | 4h | 2023-04-14 15:00 | 2023-04-14 19:00 | 50 | 0d |
| 52 | 1.3 | **Ejecución** | 60d | 2023-04-17 09:00 | 2023-07-07 19:00 | 12 | 0d |
| 53 | 1.3.1 | **Diseño** | 13d | 2023-04-17 09:00 | 2023-05-03 19:00 |  | 47d |
| 54 | 1.3.1.1 | **Diseño de arquitectura** | 5d | 2023-04-17 09:00 | 2023-04-21 19:00 |  | 47d |
| 55 |  | Determinación de atributos de calidad | 8h | 2023-04-17 09:00 | 2023-04-17 19:00 |  | 47d |
| 56 |  | Delimitación de contextos del sistema | 8h | 2023-04-18 09:00 | 2023-04-18 19:00 | 55 | 47d |
| 57 |  | Identificar entorno de desarrollo | 4h | 2023-04-19 09:00 | 2023-04-19 13:00 | 56 | 47d |
| 58 |  | Identificar entorno de producción | 4h | 2023-04-19 15:00 | 2023-04-19 19:00 | 57 | 47d |
| 59 |  | Aprobación de arquitectura del sistema | 16h | 2023-04-20 09:00 | 2023-04-21 19:00 | 58 | 47d |
| 60 | 1.3.1.2 | **Diseño del software** | 8d | 2023-04-24 09:00 | 2023-05-03 19:00 | 54 | 47d |
| 61 |  | Elaboración de wireframes | 32h | 2023-04-24 09:00 | 2023-04-27 19:00 |  | 47d |
| 62 |  | Elaboración de mockups | 32h | 2023-04-28 09:00 | 2023-05-03 19:00 | 61 | 47d |
| 63 | 1.3.2 | **Configuración de proyecto** | 4.5d | 2023-04-17 09:00 | 2023-04-21 13:00 |  | 48d |
| 64 |  | Configuración del ambiente de desarrollo | 16h | 2023-04-17 09:00 | 2023-04-18 19:00 |  | 48d |
| 65 |  | Creación del proyecto base | 16h | 2023-04-19 09:00 | 2023-04-20 19:00 | 64 | 48d |
| 66 |  | Creación de repositorio del proyecto | 4h | 2023-04-21 09:00 | 2023-04-21 13:00 | 65 | 48d |
| 67 | 1.3.3 | **Desarrollo** | 60d | 2023-04-17 09:00 | 2023-07-07 19:00 |  | 0d |
| 68 |  | Sprint 1 | 120h | 2023-04-17 09:00 | 2023-05-05 19:00 |  | 0d |
| 69 |  | Sprint 2 | 120h | 2023-05-08 09:00 | 2023-05-26 19:00 | 68 | 0d |
| 70 |  | Sprint 3 | 120h | 2023-05-29 09:00 | 2023-06-16 19:00 | 69 | 0d |

| ID | WBS | Task | Duration | Start | Finish | Predecessors | Total float |
| --- | --- | --- | --- | --- | --- | --- | --- |
| 71 |  | Sprint 4 | 120h | 2023-06-19 09:00 | 2023-07-07 19:00 | 70 | 0d |
| 72 | 1.3.4 | **Pruebas** | 7.5d | 2023-04-21 15:00 | 2023-05-02 19:00 | 63 | 48d |
| 73 | 1.3.4.1 | **Plan de pruebas unitarias** | 7.5d | 2023-04-21 15:00 | 2023-05-02 19:00 |  | 48d |
| 74 |  | Pruebas de funciones individuales | 60h | 2023-04-21 15:00 | 2023-05-02 19:00 | 63 | 48d |
| 75 |  | Pruebas de componentes individuales | 60h | 2023-04-21 15:00 | 2023-05-02 19:00 | 63 | 48d |
| 76 |  | Pruebas de módulo | 60h | 2023-04-21 15:00 | 2023-05-02 19:00 | 63 | 48d |
| 77 |  | Pruebas de caja negra y caja blanca | 60h | 2023-04-21 15:00 | 2023-05-02 19:00 | 63 | 48d |
| 78 | 1.3.4.2 | **Plan de pruebas de integración** | 7.5d | 2023-04-21 15:00 | 2023-05-02 19:00 | 63 | 48d |
| 79 |  | Pruebas de integración incremental | 60h | 2023-04-21 15:00 | 2023-05-02 19:00 |  | 48d |
| 80 |  | Pruebas de integración Big Bang | 60h | 2023-04-21 15:00 | 2023-05-02 19:00 | 63 | 48d |
| 81 | 1.3.4.3 | **User Acceptance Testing** | 7.5d | 2023-04-21 15:00 | 2023-05-02 19:00 | 63 | 48d |
| 82 |  | Definir plan de UAT | 60h | 2023-04-21 15:00 | 2023-05-02 19:00 |  | 48d |
| 83 |  | Ejecutar pruebas de usuario final | 60h | 2023-04-21 15:00 | 2023-05-02 19:00 | 63 | 48d |
| 84 | 1.3.5 | **Despliegue** | 5d | 2023-04-21 15:00 | 2023-04-28 13:00 | 63 | 50.5d |
| 85 |  | Subida de la base de datos al servidor de base de datos | 40h | 2023-04-21 15:00 | 2023-04-28 13:00 |  | 50.5d |
| 86 |  | Subida del código fuente al servidor de producción | 40h | 2023-04-21 15:00 | 2023-04-28 13:00 | 63 | 50.5d |
| 87 |  | Aprobación del proceso y puesta en marcha | 40h | 2023-04-21 15:00 | 2023-04-28 13:00 | 63 | 50.5d |
| 88 | 1.4 | **Monitoreo y Control** | 22d | 2023-07-10 09:00 | 2023-08-08 19:00 | 52 | 0d |
| 89 | 1.4.1 | **Control de ejecución del proyecto** | 12d | 2023-07-10 09:00 | 2023-07-25 19:00 |  | 0d |
| 90 |  | Controlar el alcance | 32h | 2023-07-10 09:00 | 2023-07-13 19:00 |  | 0d |
| 91 |  | Controlar el cumplimiento del cronograma | 32h | 2023-07-14 09:00 | 2023-07-19 19:00 | 90 | 0d |
| 92 |  | Control los costos y utilización de recursos | 16h | 2023-07-20 09:00 | 2023-07-21 19:00 | 91 | 0d |
| 93 |  | Controlar la calidad | 8h | 2023-07-24 09:00 | 2023-07-24 19:00 | 92 | 0d |
| 94 |  | Monitorear los riesgos | 8h | 2023-07-25 09:00 | 2023-07-25 19:00 | 93 | 0d |
| 95 | 1.4.2 | **Control de cambios integrados del proyecto** | 4d | 2023-07-26 09:00 | 2023-07-31 19:00 | 89 | 0d |
| 96 |  | Revisar requerimientos de cambios | 8h | 2023-07-26 09:00 | 2023-07-26 19:00 |  | 0d |
| 97 |  | Clasificar y registrar el cambio | 8h | 2023-07-27 09:00 | 2023-07-27 19:00 | 96 | 0d |
| 98 |  | Evaluar y aprobar el cambio | 8h | 2023-07-28 09:00 | 2023-07-28 19:00 | 97 | 0d |
| 99 |  | Gestionar proyecto de acuerdo al cambio | 8h | 2023-07-31 09:00 | 2023-07-31 19:00 | 98 | 0d |
| 100 | 1.4.3 | **Monitoreo del desempeño de Asimov** | 6d | 2023-08-01 09:00 | 2023-08-08 19:00 | 95 | 0d |
| 101 |  | Identificar KPI del software | 40h | 2023-08-01 09:00 | 2023-08-07 19:00 |  | 0d |
| 102 |  | Documentar informe de seguimiento | 8h | 2023-08-08 09:00 | 2023-08-08 19:00 | 101 | 0d |
| 103 | 1.5 | **Cierre** | 8d | 2023-08-09 09:00 | 2023-08-18 19:00 | 88 | 0d |
| 104 | 1.5.1 | **Acta de cierre del proyecto** | 5.5d | 2023-08-09 09:00 | 2023-08-16 13:00 |  | 0d |
| 105 |  | Evaluación de cumplimiento de objetivos del proyecto | 4h | 2023-08-09 09:00 | 2023-08-09 13:00 |  | 0d |
| 106 |  | Entrega del producto de software | 16h | 2023-08-09 15:00 | 2023-08-11 13:00 | 105 | 0d |
| 107 |  | Cierre de contratos | 16h | 2023-08-11 15:00 | 2023-08-15 13:00 | 106 | 0d |
| 108 |  | Aprobación de acta de cierre | 8h | 2023-08-15 15:00 | 2023-08-16 13:00 | 107 | 0d |
| 109 |  | Desmantelamiento de recursos | 16h | 2023-08-16 15:00 | 2023-08-18 13:00 | 104 | 0d |
| 110 |  | Celebración del proyecto | 4h | 2023-08-18 15:00 | 2023-08-18 19:00 | 109 | 0d |

## Version 2 (saved 2023-04-23)

Note of the change: cambios

Last finish 2023-08-18 → 2023-10-09 (+52d).

Added:

| ID | Task | Duration | Start | Finish | Predecessors | Resources |
| --- | --- | --- | --- | --- | --- | --- |
| 69 | Desarrollo de Sprint | 120h | 2023-05-10 15:00 | 2023-05-31 13:00 |  | Desarrollador 1; Desarrollador 2 |
| 70 | Entregable | 0h | 2023-05-31 13:00 | 2023-05-31 13:00 | 69 | Desarrollador 1; Desarrollador 2 |
| 72 | Desarrollo de Sprint | 120h | 2023-05-31 15:00 | 2023-06-21 13:00 |  | Desarrollador 1; Desarrollador 2 |
| 73 | Entregable | 0h | 2023-06-21 13:00 | 2023-06-21 13:00 | 72 | Desarrollador 1; Desarrollador 2 |
| 75 | Desarrollo de Sprint | 120h | 2023-06-21 15:00 | 2023-07-12 13:00 |  | Desarrollador 1; Desarrollador 2 |
| 76 | Entregable | 0h | 2023-07-12 13:00 | 2023-07-12 13:00 | 75 | Desarrollador 1; Desarrollador 2 |
| 78 | Desarrollo de Sprint | 120h | 2023-07-12 15:00 | 2023-08-02 13:00 |  | Desarrollador 1; Desarrollador 2 |
| 79 | Entregable | 0h | 2023-08-02 13:00 | 2023-08-02 13:00 | 78 | Desarrollador 1; Desarrollador 2 |

Removed: 82 Definir plan de UAT; 110 Celebración del proyecto

Changed:

| ID | Task | Start | Finish | Duration | Total float | Predecessors | Other |
| --- | --- | --- | --- | --- | --- | --- | --- |
| 1 | **Asimov** |  | 2023-08-18 19:00 → 2023-10-09 13:00 (+52d) | 110d → 145.5d |  |  |  |
| 52 | **Ejecución** |  | 2023-07-07 19:00 → 2023-08-28 19:00 (+52d) | 60d → 96d |  |  |  |
| 63 | **Configuración de proyecto** | 2023-04-17 09:00 → 2023-05-04 09:00 (+17d) | 2023-04-21 13:00 → 2023-05-10 13:00 (+19d) |  | 48d → 0d | none → 53 |  |
| 64 | Configuración del ambiente de desarrollo | 2023-04-17 09:00 → 2023-05-04 09:00 (+17d) | 2023-04-18 19:00 → 2023-05-05 19:00 (+17d) |  | 48d → 0d |  |  |
| 65 | Creación del proyecto base | 2023-04-19 09:00 → 2023-05-08 09:00 (+19d) | 2023-04-20 19:00 → 2023-05-09 19:00 (+19d) |  | 48d → 0d |  |  |
| 66 | Creación de repositorio del proyecto | 2023-04-21 09:00 → 2023-05-10 09:00 (+19d) | 2023-04-21 13:00 → 2023-05-10 13:00 (+19d) |  | 48d → 0d |  |  |
| 67 | **Desarrollo** | 2023-04-17 09:00 → 2023-05-10 15:00 (+23d) | 2023-07-07 19:00 → 2023-08-02 13:00 (+26d) |  |  | none → 63 |  |
| 68 | **Sprint 1** | 2023-04-17 09:00 → 2023-05-10 15:00 (+23d) | 2023-05-05 19:00 → 2023-05-31 13:00 (+26d) | 120h → 15d |  |  | resources Desarrollador 1; Desarrollador 2 → none |
| 71 | **Sprint 2** | 2023-05-08 09:00 → 2023-05-31 15:00 (+23d) | 2023-05-26 19:00 → 2023-06-21 13:00 (+26d) | 120h → 15d | 0d → 18.5d |  | resources Desarrollador 1; Desarrollador 2 → none |
| 74 | **Sprint 3** | 2023-05-29 09:00 → 2023-06-21 15:00 (+23d) | 2023-06-16 19:00 → 2023-07-12 13:00 (+26d) | 120h → 15d | 0d → 18.5d |  | resources Desarrollador 1; Desarrollador 2 → none |
| 77 | **Sprint 4** | 2023-06-19 09:00 → 2023-07-12 15:00 (+23d) | 2023-07-07 19:00 → 2023-08-02 13:00 (+26d) | 120h → 15d | 0d → 18.5d |  | resources Desarrollador 1; Desarrollador 2 → none |
| 80 | **Pruebas** | 2023-04-21 15:00 → 2023-05-31 15:00 (+40d) | 2023-05-02 19:00 → 2023-08-11 19:00 (+101d) | 7.5d → 52.5d | 48d → 0d | 63 → 68 |  |
| 81 | **Plan de pruebas unitarias** | 2023-04-21 15:00 → 2023-05-31 15:00 (+40d) | 2023-05-02 19:00 → 2023-07-12 13:00 (+71d) | 7.5d → 30d | 48d → 0d |  |  |
| 82 | Pruebas de funciones individuales | 2023-04-21 15:00 → 2023-05-31 15:00 (+40d) | 2023-05-02 19:00 → 2023-06-09 19:00 (+38d) |  | 48d → 0d | 63 → none |  |
| 83 | Pruebas de componentes individuales | 2023-04-21 15:00 → 2023-06-12 09:00 (+52d) | 2023-05-02 19:00 → 2023-06-21 13:00 (+50d) |  | 48d → 0d | 63 → 82 |  |
| 84 | Pruebas de módulo | 2023-04-21 15:00 → 2023-06-21 15:00 (+61d) | 2023-05-02 19:00 → 2023-06-30 19:00 (+59d) |  | 48d → 0d | 63 → 83 |  |
| 85 | Pruebas de caja negra y caja blanca | 2023-04-21 15:00 → 2023-07-03 09:00 (+73d) | 2023-05-02 19:00 → 2023-07-12 13:00 (+71d) |  | 48d → 0d | 63 → 84 |  |
| 86 | **Plan de pruebas de integración** | 2023-04-21 15:00 → 2023-07-12 15:00 (+82d) | 2023-05-02 19:00 → 2023-08-02 13:00 (+92d) | 7.5d → 15d | 48d → 0d | 63 → 81 |  |
| 87 | Pruebas de integración incremental | 2023-04-21 15:00 → 2023-07-12 15:00 (+82d) | 2023-05-02 19:00 → 2023-07-21 19:00 (+80d) |  | 48d → 0d |  | resources none → Analista de calidad |
| 88 | Pruebas de integración Big Bang | 2023-04-21 15:00 → 2023-07-24 09:00 (+94d) | 2023-05-02 19:00 → 2023-08-02 13:00 (+92d) |  | 48d → 0d | 63 → 87 | resources none → Analista de calidad |
| 89 | **User Acceptance Testing** | 2023-04-21 15:00 → 2023-08-02 15:00 (+103d) | 2023-05-02 19:00 → 2023-08-11 19:00 (+101d) |  | 48d → 0d | 63 → 86 |  |
| 90 | Ejecutar pruebas de usuario final | 2023-04-21 15:00 → 2023-08-02 15:00 (+103d) | 2023-05-02 19:00 → 2023-08-11 19:00 (+101d) |  | 48d → 0d | 63 → none | resources none → Product Owner |
| 91 | **Despliegue** | 2023-04-21 15:00 → 2023-08-14 09:00 (+115d) | 2023-04-28 13:00 → 2023-08-28 19:00 (+122d) | 5d → 11d | 50.5d → 0d | 63 → 80 |  |
| 92 | Subida de la base de datos al servidor | 2023-04-21 15:00 → 2023-08-14 09:00 (+115d) | 2023-04-28 13:00 → 2023-08-18 19:00 (+112d) |  | 50.5d → 0d |  | was named Subida de la base de datos al servidor de base de datos; resources none → Desarrollador 1 |
| 93 | Subida del código fuente al servidor de producción | 2023-04-21 15:00 → 2023-08-15 09:00 (+116d) | 2023-04-28 13:00 → 2023-08-21 19:00 (+115d) |  | 50.5d → 0d | 63 → 92SS+8h | resources none → Desarrollador 2 |
| 94 | Aprobación del proceso y puesta en marcha | 2023-04-21 15:00 → 2023-08-22 09:00 (+123d) | 2023-04-28 13:00 → 2023-08-28 19:00 (+122d) |  | 50.5d → 0d | 63 → 92, 93 | resources none → Product Owner |
| 95 | **Monitoreo y Control** | 2023-07-10 09:00 → 2023-08-29 09:00 (+50d) | 2023-08-08 19:00 → 2023-09-27 19:00 (+50d) |  |  |  |  |
| 96 | **Control de ejecución del proyecto** | 2023-07-10 09:00 → 2023-08-29 09:00 (+50d) | 2023-07-25 19:00 → 2023-09-13 19:00 (+50d) |  |  |  |  |
| 97 | Controlar el alcance | 2023-07-10 09:00 → 2023-08-29 09:00 (+50d) | 2023-07-13 19:00 → 2023-09-01 19:00 (+50d) |  |  |  | resources none → Product Owner |
| 98 | Controlar el cumplimiento del cronograma | 2023-07-14 09:00 → 2023-09-04 09:00 (+52d) | 2023-07-19 19:00 → 2023-09-07 19:00 (+50d) |  |  |  | resources none → Scrum Master |
| 99 | Control los costos y utilización de recursos | 2023-07-20 09:00 → 2023-09-08 09:00 (+50d) | 2023-07-21 19:00 → 2023-09-11 19:00 (+52d) |  |  |  | resources none → Product Manager |
| 100 | Controlar la calidad | 2023-07-24 09:00 → 2023-09-12 09:00 (+50d) | 2023-07-24 19:00 → 2023-09-12 19:00 (+50d) |  |  |  | resources none → Analista de calidad |
| 101 | Monitorear los riesgos | 2023-07-25 09:00 → 2023-09-13 09:00 (+50d) | 2023-07-25 19:00 → 2023-09-13 19:00 (+50d) |  |  |  | resources none → Scrum Master |
| 102 | **Control de cambios integrados del proyecto** | 2023-07-26 09:00 → 2023-09-14 09:00 (+50d) | 2023-07-31 19:00 → 2023-09-19 19:00 (+50d) |  |  |  |  |
| 103 | Revisar requerimientos de cambios | 2023-07-26 09:00 → 2023-09-14 09:00 (+50d) | 2023-07-26 19:00 → 2023-09-14 19:00 (+50d) |  |  |  | resources none → Scrum Master |
| 104 | Clasificar y registrar el cambio | 2023-07-27 09:00 → 2023-09-15 09:00 (+50d) | 2023-07-27 19:00 → 2023-09-15 19:00 (+50d) |  |  |  | resources none → Scrum Master |
| 105 | Evaluar y aprobar el cambio | 2023-07-28 09:00 → 2023-09-18 09:00 (+52d) | 2023-07-28 19:00 → 2023-09-18 19:00 (+52d) |  |  |  | resources none → Product Owner |
| 106 | Gestionar proyecto de acuerdo al cambio | 2023-07-31 09:00 → 2023-09-19 09:00 (+50d) | 2023-07-31 19:00 → 2023-09-19 19:00 (+50d) |  |  |  | resources none → Scrum Master |
| 107 | **Monitoreo del desempeño de Asimov** | 2023-08-01 09:00 → 2023-09-20 09:00 (+50d) | 2023-08-08 19:00 → 2023-09-27 19:00 (+50d) |  |  |  |  |
| 108 | Identificar KPI del software | 2023-08-01 09:00 → 2023-09-20 09:00 (+50d) | 2023-08-07 19:00 → 2023-09-26 19:00 (+50d) |  |  |  | resources none → Analista de calidad |
| 109 | Documentar informe de seguimiento | 2023-08-08 09:00 → 2023-09-27 09:00 (+50d) | 2023-08-08 19:00 → 2023-09-27 19:00 (+50d) |  |  |  | resources none → Analista de calidad |
| 110 | **Cierre** | 2023-08-09 09:00 → 2023-09-28 09:00 (+50d) | 2023-08-18 19:00 → 2023-10-09 13:00 (+52d) | 8d → 7.5d |  |  |  |
| 111 | **Acta de cierre del proyecto** | 2023-08-09 09:00 → 2023-09-28 09:00 (+50d) | 2023-08-16 13:00 → 2023-10-05 13:00 (+50d) |  |  |  |  |
| 112 | Evaluación de cumplimiento de objetivos del proyecto | 2023-08-09 09:00 → 2023-09-28 09:00 (+50d) | 2023-08-09 13:00 → 2023-09-28 13:00 (+50d) |  |  |  | resources none → Product Owner |
| 113 | Entrega del producto de software | 2023-08-09 15:00 → 2023-09-28 15:00 (+50d) | 2023-08-11 13:00 → 2023-10-02 13:00 (+52d) |  |  |  | resources none → Product Manager |
| 114 | Cierre de contratos | 2023-08-11 15:00 → 2023-10-02 15:00 (+52d) | 2023-08-15 13:00 → 2023-10-04 13:00 (+50d) |  |  |  | resources none → Product Manager |
| 115 | Aprobación de acta de cierre | 2023-08-15 15:00 → 2023-10-04 15:00 (+50d) | 2023-08-16 13:00 → 2023-10-05 13:00 (+50d) |  |  |  | resources none → Product Manager |
| 116 | Desmantelamiento de recursos | 2023-08-16 15:00 → 2023-10-05 15:00 (+50d) | 2023-08-18 13:00 → 2023-10-09 13:00 (+52d) |  |  |  | resources none → Product Manager |

## Version 3 (saved 2023-04-23)

Note of the change: cambios

Last finish stays 2023-10-09. Complete tasks 0 → 40.

Changed:

| ID | Task | Start | Finish | Complete | Total float |
| --- | --- | --- | --- | --- | --- |
| 1 | **Asimov** | 2023-03-20 09:00 A |  | 0% → 14% |  |
| 2 | **Inicio** | 2023-03-20 09:00 A | 2023-03-21 13:00 A | 0% → 100% | 0d → none |
| 3 | **Desarrollo Project Charter** | 2023-03-20 09:00 A | 2023-03-21 13:00 A | 0% → 100% | 0d → none |
| 4 | Identificar necesidades y requerimientos | 2023-03-20 09:00 A | 2023-03-20 19:00 A | 0% → 100% | 0.5d → none |
| 5 | Identificar indicadores de éxito y alcance | 2023-03-20 09:00 A | 2023-03-20 13:00 A | 0% → 100% | 1d → none |
| 6 | Identificar restricciones e impacto | 2023-03-20 09:00 A | 2023-03-20 13:00 A | 0% → 100% | 0d → none |
| 7 | **Organizar equipo, stakeholders y recursos** | 2023-03-20 15:00 A | 2023-03-21 13:00 A | 0% → 100% | 0d → none |
| 8 | Identificación de stakeholders | 2023-03-20 15:00 A | 2023-03-20 19:00 A | 0% → 100% | 0d → none |
| 9 | Asignación de roles en equipo | 2023-03-21 09:00 A | 2023-03-21 13:00 A | 0% → 100% | 0d → none |
| 10 | Definir fases e hitos del proyecto | 2023-03-20 15:00 A | 2023-03-21 13:00 A | 0% → 100% | 0d → none |
| 11 | Aprobación del proyecto | 2023-03-21 13:00 A | 2023-03-21 13:00 A | 0% → 100% | 0d → none |
| 12 | **Planificación** | 2023-03-21 15:00 A | 2023-04-14 19:00 A | 0% → 100% | 0d → none |
| 13 | **Gestión del alcance** | 2023-03-21 15:00 A | 2023-03-22 13:00 A | 0% → 100% | 0d → none |
| 14 | Elaborar estructura jerarquica WBS | 2023-03-21 15:00 A | 2023-03-21 19:00 A | 0% → 100% | 0d → none |
| 15 | Realizar descripción de fases | 2023-03-22 09:00 A | 2023-03-22 13:00 A | 0% → 100% | 0d → none |
| 16 | **Gestión de requerimientos** | 2023-03-22 15:00 A | 2023-03-27 13:00 A | 0% → 100% | 0d → none |
| 17 | Recolectar requerimientos | 2023-03-22 15:00 A | 2023-03-23 13:00 A | 0% → 100% | 0d → none |
| 18 | Analizar requerimientos | 2023-03-23 15:00 A | 2023-03-23 19:00 A | 0% → 100% | 0d → none |
| 19 | Categorizar y describir requerimientos | 2023-03-24 09:00 A | 2023-03-24 13:00 A | 0% → 100% | 0d → none |
| 20 | Elaborar matriz de trazabilidad | 2023-03-24 15:00 A | 2023-03-27 13:00 A | 0% → 100% | 0d → none |
| 21 | **Gestión de costos** | 2023-03-27 15:00 A | 2023-03-31 13:00 A | 0% → 100% | 0d → none |
| 22 | **Identificación de costos unitarios asociados al proyecto** | 2023-03-27 15:00 A | 2023-03-31 13:00 A | 0% → 100% | 0d → none |
| 23 | Costos de personal | 2023-03-27 15:00 A | 2023-03-28 13:00 A | 0% → 100% | 0d → none |
| 24 | Costos de infraestructura | 2023-03-28 15:00 A | 2023-03-29 13:00 A | 0% → 100% | 0d → none |
| 25 | Costos de software y hardware | 2023-03-29 15:00 A | 2023-03-30 13:00 A | 0% → 100% | 0d → none |
| 26 | Costos de servicios tercerizados | 2023-03-30 15:00 A | 2023-03-31 13:00 A | 0% → 100% | 0d → none |
| 27 | Costos por tarea | 2023-03-27 15:00 A | 2023-03-27 19:00 A | 0% → 100% | 3d → none |
| 28 | Reservas para contingencias | 2023-03-28 09:00 A | 2023-03-28 13:00 A | 0% → 100% | 3d → none |
| 29 | **Gestión de recursos** | 2023-03-31 15:00 A | 2023-04-05 19:00 A | 0% → 100% | 0d → none |
| 30 | **Plan de gestión de recursos humanos** | 2023-03-31 15:00 A | 2023-04-04 13:00 A | 0% → 100% | 0d → none |
| 31 | Definir organigrama del proyecto | 2023-03-31 15:00 A | 2023-03-31 19:00 A | 0% → 100% | 0d → none |
| 32 | Describir roles del equipo del proyecto | 2023-04-03 09:00 A | 2023-04-03 13:00 A | 0% → 100% | 0d → none |
| 33 | Establecer requerimientos de personal de proyecto | 2023-04-03 15:00 A | 2023-04-03 19:00 A | 0% → 100% | 0d → none |
| 34 | Definir tareas a cargo | 2023-04-04 09:00 A | 2023-04-04 13:00 A | 0% → 100% | 0d → none |
| 35 | **Estructura de desgloce de recursos** | 2023-04-04 15:00 A | 2023-04-05 19:00 A | 0% → 100% | 0d → none |
| 36 | Definir organigrama de recursos | 2023-04-04 15:00 A | 2023-04-04 19:00 A | 0% → 100% | 0d → none |
| 37 | Definir criterios de contratación y costo unitario | 2023-04-05 09:00 A | 2023-04-05 19:00 A | 0% → 100% | 0d → none |
| 38 | **Gestión del cronograma** | 2023-04-06 09:00 A | 2023-04-07 19:00 A | 0% → 100% | 0d → none |
| 39 | **Cronograma del proyecto** | 2023-04-06 09:00 A | 2023-04-07 19:00 A | 0% → 100% | 0d → none |
| 40 | Agregar fases, subfases y actividades del proyecto | 2023-04-06 09:00 A | 2023-04-06 13:00 A | 0% → 100% | 0d → none |
| 41 | Agregar hitos del proyecto | 2023-04-06 15:00 A | 2023-04-06 19:00 A | 0% → 100% | 0d → none |
| 42 | Vincular fases, subfases e hitos | 2023-04-07 09:00 A | 2023-04-07 13:00 A | 0% → 100% | 0d → none |
| 43 | Agregar recursos y costos | 2023-04-07 15:00 A | 2023-04-07 19:00 A | 0% → 100% | 0d → none |
| 44 | **Gestión de riesgos** | 2023-04-10 09:00 A | 2023-04-12 13:00 A | 0% → 100% | 0d → none |
| 45 | Establecer priorización de riesgos | 2023-04-10 09:00 A | 2023-04-10 19:00 A | 0% → 100% | 0d → none |
| 46 | Documentar plan de gestión de riesgo | 2023-04-11 09:00 A | 2023-04-11 13:00 A | 0% → 100% | 0d → none |
| 47 | Identificar plan de soluciones | 2023-04-11 15:00 A | 2023-04-12 13:00 A | 0% → 100% | 0d → none |
| 48 | **Gestión de calidad** | 2023-04-12 15:00 A | 2023-04-14 19:00 A | 0% → 100% | 0d → none |
| 49 | Definir requisitos y estándares de calidad | 2023-04-12 15:00 A | 2023-04-13 13:00 A | 0% → 100% | 0d → none |
| 50 | Identificar métricas de medición de calidad | 2023-04-13 15:00 A | 2023-04-14 13:00 A | 0% → 100% | 0d → none |
| 51 | Documentar plan de gestión de calidad | 2023-04-14 15:00 A | 2023-04-14 19:00 A | 0% → 100% | 0d → none |
| 52 | **Ejecución** | 2023-04-17 09:00 A |  | 0% → 3% |  |
| 53 | **Diseño** | 2023-04-17 09:00 A |  | 0% → 38% |  |
| 54 | **Diseño de arquitectura** | 2023-04-17 09:00 A | 2023-04-21 19:00 A | 0% → 100% | 0d → none |
| 55 | Determinación de atributos de calidad | 2023-04-17 09:00 A | 2023-04-17 19:00 A | 0% → 100% | 0d → none |
| 56 | Delimitación de contextos del sistema | 2023-04-18 09:00 A | 2023-04-18 19:00 A | 0% → 100% | 0d → none |
| 57 | Identificar entorno de desarrollo | 2023-04-19 09:00 A | 2023-04-19 13:00 A | 0% → 100% | 0d → none |
| 58 | Identificar entorno de producción | 2023-04-19 15:00 A | 2023-04-19 19:00 A | 0% → 100% | 0d → none |
| 59 | Aprobación de arquitectura del sistema | 2023-04-20 09:00 A | 2023-04-21 19:00 A | 0% → 100% | 0d → none |

## Version 4 (saved 2023-04-23)

Note of the change: cost added materials

Last finish stays 2023-10-09. Complete tasks 40 → 38.

Changed:

| ID | Task | Finish | Complete | Total float | Other |
| --- | --- | --- | --- | --- | --- |
| 12 | **Planificación** | 2023-04-14 19:00 A → 2023-04-14 19:00 | 100% → 99% | none → 0d |  |
| 21 | **Gestión de costos** | 2023-03-31 13:00 A → 2023-03-31 13:00 | 100% → 99% | none → 10.5d |  |
| 22 | **Identificación de costos unitarios asociados al proyecto** | 2023-03-31 13:00 A → 2023-03-31 13:00 | 100% → 99% | none → 10.5d |  |
| 25 | Costos de software y hardware | 2023-03-30 13:00 A → 2023-03-30 13:00 | 100% → 99% | none → 1d | resources Product Owner → Product Owner; Cluster [200%]; Computadora [600%]; Servidor |
| 26 | Costos de servicios tercerizados | 2023-03-31 13:00 A → 2023-03-31 13:00 | 100% → 99% | none → 10.5d | resources Product Owner → Product Owner; Licencia Adobe [600%]; Licencia Office [600%]; Licencia VS Enterprise [600%]; Licencia Windows [600%] |
